# Word Tur-01

Schedule from MS Project, 2016-05-02 to 2016-08-10, costs in $, A marks actual dates.
Hewlett-Packard Company

## Calendars

- Estándar: Mon-Fri 09:00-13:00, 15:00-19:00; Sat-Sun off. Exceptions (off unless hours are given): 2016-05-05 (Día de descanso Obligatorio), 2016-05-10 (Dia de las madres), 2016-05-13 (Día del maestro), 2016-07-04 (Día de descanso Obligatorio), 2016-07-18 to 2016-07-29 (Vacaciones).

## Resources

| Resource | Rate |
| --- | --- |
| Diseñador | 109.19 |
| Administrador de Proyectos | 145.69 |
| Tester | 105.55 |
| Analista | 108.2 |
| Programador | 92.01 |
| Asegurador de la Calidad | 99.17 |
| Administrador de la Configuración | 84.77 |

## Schedule

| ID | WBS | Task | Type | Duration | Start | Finish | Predecessors | Complete | Remaining | Total slack | Free slack | Constraint | Resources | Work | Actual work | Cost | Actual cost |
| --- | --- | --- | --- | --- | --- | --- | --- | --- | --- | --- | --- | --- | --- | --- | --- | --- | --- |
| 1 | 1 | **Plan preliminar** |  | 1.62d | 2016-05-02 09:00 A | 2016-05-03 16:00 A |  | 100% |  |  |  |  |  | 14h | 14h | 2,039.66 | 2,039.66 |
| 2 | 1.1 | Generar WBS del producto inicial |  | 4h | 2016-05-02 09:00 A | 2016-05-02 13:00 A |  | 100% |  |  |  |  | Administrador de Proyectos | 4h | 4h | 582.76 | 582.76 |
| 3 | 1.2 | Generar Project Charter |  | 1h | 2016-05-02 15:00 A | 2016-05-02 16:00 A | 2 | 100% |  |  |  |  | Administrador de Proyectos | 1h | 1h | 145.69 | 145.69 |
| 4 | 1.3 | Plan preliminar del proyecto |  | 8h | 2016-05-02 16:00 A | 2016-05-03 16:00 A | 3 | 100% |  |  |  |  | Administrador de Proyectos | 8h | 8h | 1,165.52 | 1,165.52 |
| 5 | 1.4 | Matriz de comunicación |  | 1h | 2016-05-03 15:00 A | 2016-05-03 16:00 A | 4FS-1h | 100% |  |  |  |  | Administrador de Proyectos | 1h | 1h | 145.69 | 145.69 |
| 6 | 1.5 | Entrega del WBS del producto inicial, Project Charter, Plan preliminar, matriz de comunicación | milestone | 0d | 2016-05-03 09:00 A | 2016-05-03 09:00 A |  | 100% |  |  |  | start no earlier than 2016-05-03 09:00 |  |  |  |  |  |
| 7 | 2 | **Nombre de proyecto** |  | 57.09d | 2016-05-03 16:00 A | 2016-08-10 16:42 |  | 74% | 14.93d | 0d |  |  |  | 542.5h | 348.87h | 58,551.03 | 35,237.33 |
| 8 | 2.1 | Formación del equipo |  | 1h | 2016-05-03 16:00 A | 2016-05-03 17:00 A | 5 | 100% |  |  |  |  | Administrador de Proyectos | 1h | 1h | 145.69 | 145.69 |
| 9 | 2.2 | **Construcción** |  | 56.96d | 2016-05-03 17:00 A | 2016-08-10 16:42 |  | 74% | 14.93d | 0d |  |  |  | 541.5h | 347.87h | 58,405.33 | 35,091.64 |
| 10 | 2.2.1 | **Fase Uno/Iteracion uno** |  | 56.96d | 2016-05-03 17:00 A | 2016-08-10 16:42 |  | 74% | 14.93d | 0d |  |  |  | 541.5h | 347.87h | 58,405.33 | 35,091.64 |
| 11 | 2.2.1.1 | **Analisis** |  | 4.6d | 2016-05-03 17:00 A | 2016-05-12 11:48 |  | 94% | 0.26d | 52.36d | 0.5d |  |  | 39h | 36.1h | 4,073.05 | 3,732.03 |
| 12 | 2.2.1.1.1 | **Elicitación** |  | 2.31d | 2016-05-03 17:00 A | 2016-05-09 09:30 A |  | 100% |  |  |  |  |  | 25h | 25h | 2,517.56 | 2,517.56 |
| 13 | 2.2.1.1.1.1 | Generar lista de proveedores |  | 2h | 2016-05-03 17:00 A | 2016-05-03 19:00 A | 8 | 100% |  |  |  |  | Analista | 2h | 2h | 216.4 | 216.4 |
| 14 | 2.2.1.1.1.2 | Evaluar proveedores de requerimientos |  | 1h | 2016-05-04 09:00 A | 2016-05-04 10:00 A | 13 | 100% |  |  |  |  | Analista | 1h | 1h | 108.2 | 108.2 |
| 15 | 2.2.1.1.1.3 | Definir estrategia de recoleccion de datos |  | 0.5h | 2016-05-04 09:30 A | 2016-05-04 10:00 A | 14FS-0.5h | 100% |  |  |  |  | Analista | 0.5h | 0.5h | 54.1 | 54.1 |
| 16 | 2.2.1.1.1.4 | Planificacion de reuniones de licitacion |  | 1.5h | 2016-05-04 10:00 A | 2016-05-04 11:30 A | 15 | 100% |  |  |  |  | Analista | 1.5h | 1.5h | 162.3 | 162.3 |
| 17 | 2.2.1.1.1.5 | Identificar procesos del sistema |  | 8h | 2016-05-04 11:30 A | 2016-05-06 11:30 A | 16 | 100% |  |  |  |  | Administrador de la Configuración | 8h | 8h | 678.16 | 678.16 |
| 18 | 2.2.1.1.1.6 | Identificar requerimientos funcionales |  | 8h | 2016-05-04 17:30 A | 2016-05-06 17:30 A | 17FS-4h | 100% |  |  |  |  | Analista | 8h | 8h | 865.6 | 865.6 |
| 19 | 2.2.1.1.1.7 | Identificar requerimientos no funcionales |  | 4h | 2016-05-06 15:30 A | 2016-05-09 09:30 A | 18FS-2h | 100% |  |  |  |  | Analista | 4h | 4h | 432.8 | 432.8 |
| 20 | 2.2.1.1.2 | **Especificación** |  | 1.94d | 2016-05-09 09:30 A | 2016-05-11 19:00 | 12 | 90% | 0.19d | 52.61d | 0d |  |  | 8h | 7.2h | 847.54 | 760.98 |
| 21 | 2.2.1.1.2.1 | Evaluacion de requerimientos |  | 2h | 2016-05-09 09:30 A | 2016-05-09 11:30 A | 19FS-0.5h | 100% |  |  |  |  | Asegurador de la Calidad | 2h | 2h | 198.34 | 198.34 |
| 22 | 2.2.1.1.2.2 | SRS |  | 6h | 2016-05-11 11:00 A | 2016-05-11 19:00 | 21FS-2h | 87% | 0.8h | 52.61d | 0d | finish no earlier than 2016-05-11 19:00 | Analista | 6h | 5.2h | 649.2 | 562.64 |
| 23 | 2.2.1.1.3 | **Gestión de requerimientos** |  | 0.35d | 2016-05-12 09:00 A | 2016-05-12 11:48 | 20 | 70% | 0.11d | 52.36d |  |  |  | 6h | 3.9h | 707.95 | 453.49 |
| 24 | 2.2.1.1.3.1 | Priorizar los requerimientos |  | 2h | 2016-05-12 09:00 A | 2016-05-12 11:00 | 22 | 91% | 0.19h | 52.46d |  |  | Analista | 2h | 1.81h | 216.4 | 196.02 |
| 25 | 2.2.1.1.3.2 | Almacenar en repositorio |  | 0.5h | 2016-05-12 10:00 A | 2016-05-12 10:30 A | 24FS-1h | 100% |  |  |  |  | Administrador de Proyectos | 0.5h | 0.5h | 72.85 | 72.85 |
| 26 | 2.2.1.1.3.3 | Asignar a desarrolladores de software |  | 1h | 2016-05-12 10:30 A | 2016-05-12 11:30 | 25 | 31% | 0.69h | 52.4d | 0d |  | Administrador de Proyectos | 1h | 0.31h | 145.69 | 45.41 |
| 27 | 2.2.1.1.3.4 | Administración de cambios de requerimientos |  | 0.5h | 2016-05-12 11:00 A | 2016-05-12 11:30 | 26FS-0.5h | 50% | 0.25h | 52.4d | 0d |  | Administrador de Proyectos; Analista; Asegurador de la Calidad; Administrador de la Configuración | 2h | 1h | 218.91 | 109.46 |
| 28 | 2.2.1.1.3.5 | Administración de la trazabilidad de requerimientos |  | 0.5h | 2016-05-12 11:18 A | 2016-05-12 11:48 | 27FS-0.2h | 55% | 0.23h | 52.36d |  |  | Analista | 0.5h | 0.28h | 54.1 | 29.75 |
| 29 | 2.2.1.1.3.6 | Entrega lista de proveedores de requerimientos, Planificación de reuniones de licitacion, SRS | milestone | 0d | 2016-05-12 09:00 A | 2016-05-12 09:00 A |  | 100% |  |  |  | start no earlier than 2016-05-12 09:00 |  |  |  |  |  |

Notes:
- 2: Definir actividades que se realizaran durante la ejecucion del proyecto, establecer duracion, fechas de inicio, fechas de fin, costos, recursos, actividades sucesoras y predecesoras, hitos, revisiones
- 3: Una herramienta crucial para el desarrollo de toda actividad es el Project Charter o Acta de Constitución de Proyecto, en la cual se detallan cada uno de los aspectos fundamentales y cruciales de todo Proyecto, es aquí donde delimitamos nuestro alcance, definimos los objetivos, establecemos los entregables, definimos las posiciones (Stakeholder, Clientes), asignamos responsabilidades, definimos los planes (Financieros, Recursos, Calidad)y las consideraciones (Riesgos, asunciones, restricciones).
- 4: Identificación de las necesidades del sistema en cuanto a procesos, / datos, limitaciones, infraestructuras, presupuesto, Definición de los requerimientos.
- 5: Es una herramienta de evaluación diseñada para determinar con exactitud cómo se comunica un individuo y para proporcionar un marco conceptual para determinar objetivos de comunicación lógicos.
- 8: Aquí se establecen las personas que estarán involucradas en la creación del proyecto
- 12: Durante esta etapa se lleva a cabo la recaudación de datos necesarios en los requerimientos, esto con ayuda de un método eficiente para su recolección como lo es una encuesta aplicada.
- 13: Se genera una lista de proveedores que se van a utilizar durante el proyecto.
- 14: El objetivo es evaluar los proveedores a entrevistar y aportar información más detallada sobre el entorno operacional de la empresa.
- 15: Definir una estrategia acorde a nuestros acuerdos entre los involucrados.
- 16: Se necesita conocer las necesidades de la organización durante el proyecto para asignar las reuniones.
- 17: Se necesita conocer las actividades así como las personas que intervienen en ellas.
- 18: Se describe todo lo que realizará nuestro sitio, es decir se especificará todo lo que el sitio tiene que hacer.
- 19: Se necesita conocer los requerimientos del sistema como la fiabilidad, portabilidad, así como la interfaz del usuario.
- 20: Actividad donde se llevan a cabo los procesos de evaluación de requerimientos y descripción, esto para determinar si nos serán funcionales.
- 21: Evaluar cada uno de los requerimientos y que sean los indicados para la elaboración del proyecto.
- 22: Especificación de requerimientos del software
- 23: Aquí se hace una priorización de los requerimientos por su grado de importancia así como administrar los cambios en los mismos.
- 24: Aquí se hace una priorización de los requerimientos por su grado de importancia así como administrar los cambios en los mismos.
- 25: Es una herramienta en linea donde se podran almacenar todos los documentos generados en el proyecto
- 26: Se asigna a cada uno de los involucrados los requerimientos para el desarrollo de software.
- 27: Se realiza la administración de cada uno de los cambios realizados a lo largo del proyecto.
- 28: Identifica la relación entre los procesos y elementos del sistema y realiza un seguimiento del estado de los requerimientos.

| ID | WBS | Task | Type | Duration | Start | Finish | Predecessors | Complete | Remaining | Total slack | Free slack | Resources | Work | Actual work | Cost | Actual cost |
| --- | --- | --- | --- | --- | --- | --- | --- | --- | --- | --- | --- | --- | --- | --- | --- | --- |
| 30 | 2.2.1.2 | **Planificación** |  | 2.92d | 2016-05-12 11:48 A | 2016-05-18 11:12 | 11FS-4h | 95% | 0.14d | 49.44d |  |  | 27h | 25.8h | 3,222.35 | 3,096.57 |
| 31 | 2.2.1.2.1 | Definición del ciclo de vida |  | 0.5h | 2016-05-12 11:48 A | 2016-05-12 12:18 A | 28 | 100% |  |  |  | Administrador de Proyectos | 0.5h | 0.5h | 72.85 | 72.85 |
| 32 | 2.2.1.2.2 | Definición de politicas |  | 0.5h | 2016-05-12 12:12 A | 2016-05-12 12:42 A | 31FS-0.1h | 100% |  |  |  | Administrador de Proyectos | 0.5h | 0.5h | 72.85 | 72.85 |
| 33 | 2.2.1.2.3 | Actualizar plan de proyecto |  | 2h | 2016-05-12 12:42 A | 2016-05-12 16:42 A | 32 | 100% |  |  |  | Administrador de Proyectos | 2h | 2h | 291.38 | 291.38 |
| 34 | 2.2.1.2.4 | Actualizar matriz de comunicación |  | 1h | 2016-05-12 16:12 A | 2016-05-12 17:12 A | 33FS-0.5h | 100% |  |  |  | Administrador de Proyectos | 1h | 1h | 145.69 | 145.69 |
| 35 | 2.2.1.2.5 | **Estimación** |  | 0.62d | 2016-05-12 17:12 A | 2016-05-16 12:12 A |  | 100% |  |  |  |  | 6h | 6h | 874.14 | 874.14 |
| 36 | 2.2.1.2.5.1 | Actualizar WBS/Calendario |  | 1h | 2016-05-12 17:12 A | 2016-05-12 18:12 A | 34 | 100% |  |  |  | Administrador de Proyectos | 1h | 1h | 145.69 | 145.69 |
| 37 | 2.2.1.2.5.2 | Diccionario del WBS |  | 4h | 2016-05-12 18:12 A | 2016-05-16 12:12 A | 36 | 100% |  |  |  | Administrador de Proyectos | 4h | 4h | 582.76 | 582.76 |
| 38 | 2.2.1.2.5.3 | Costos |  | 1h | 2016-05-16 10:12 A | 2016-05-16 11:12 A | 37FS-2h | 100% |  |  |  | Administrador de Proyectos | 1h | 1h | 145.69 | 145.69 |
| 39 | 2.2.1.2.6 | **Riesgos** |  | 1.5d | 2016-05-16 12:12 A | 2016-05-17 18:12 | 35 | 94% | 0.09d | 49.81d | 0d |  | 12h | 11.25h | 1,298.4 | 1,217.25 |
| 40 | 2.2.1.2.6.1 | Identificación de riesgos |  | 6h | 2016-05-16 12:12 A | 2016-05-17 10:12 A | 38 | 100% |  |  |  | Analista | 6h | 6h | 649.2 | 649.2 |
| 41 | 2.2.1.2.6.2 | Asignacion de prioridades |  | 2h | 2016-05-17 10:12 A | 2016-05-17 12:12 A | 40 | 100% |  |  |  | Analista | 2h | 2h | 216.4 | 216.4 |
| 42 | 2.2.1.2.6.3 | Plan de mitigación y contingencia |  | 4h | 2016-05-17 12:12 A | 2016-05-17 18:12 | 41 | 81% | 0.75h | 49.81d |  | Analista | 4h | 3.25h | 432.8 | 351.65 |
| 43 | 2.2.1.2.7 | **Aseguramiento de la calidad** |  | 0.62d | 2016-05-17 16:12 A | 2016-05-18 11:12 | 39FS-2h | 85% | 0.09d | 49.44d |  |  | 5h | 4.55h | 467.05 | 422.42 |
| 44 | 2.2.1.2.7.1 | Plan de gestión de la configuración |  | 2h | 2016-05-17 18:12 A | 2016-05-18 10:12 A | 42 | 100% |  |  |  | Administrador de la Configuración; Asegurador de la Calidad | 4h | 4h | 367.88 | 367.88 |
| 45 | 2.2.1.2.7.2 | Junta de arranque de construcción |  | 1h | 2016-05-18 10:12 A | 2016-05-18 11:12 | 44 | 55% | 0.45h | 49.44d |  | Asegurador de la Calidad | 1h | 0.55h | 99.17 | 54.54 |
| 46 | 2.2.1.2.7.3 | Entrega del plan del proyecto actualizado,matriz de comunicación, diccionario WBS,Identificacion de riesgos,Plan de mitigación y contingencia, Plan de gestion de la configuración, Junta de arranque de construcción | milestone | 0d | 2016-05-17 16:12 A | 2016-05-17 16:12 A |  | 100% |  |  |  |  |  |  |  |  |
| 47 | 2.2.1.3 | **Diseño** |  | 2.88d | 2016-05-18 09:12 A | 2016-05-20 18:12 A | 30FS-2h | 100% |  |  |  |  | 21h | 21h | 2,292.99 | 2,292.99 |
| 48 | 2.2.1.3.1 | Definición de la arquitectura |  | 2h | 2016-05-18 11:12 A | 2016-05-18 15:12 A | 45 | 100% |  |  |  | Diseñador | 2h | 2h | 218.38 | 218.38 |
| 49 | 2.2.1.3.2 | Diagrama de caso de uso |  | 4h | 2016-05-18 15:12 A | 2016-05-19 09:12 A | 48 | 100% |  |  |  | Diseñador | 4h | 4h | 436.76 | 436.76 |
| 50 | 2.2.1.3.3 | Diagrama de secuencia |  | 2h | 2016-05-19 09:12 A | 2016-05-19 11:12 A | 49 | 100% |  |  |  | Diseñador | 2h | 2h | 218.38 | 218.38 |
| 51 | 2.2.1.3.4 | Diagrama de clases |  | 1h | 2016-05-19 11:12 A | 2016-05-19 12:12 A | 50 | 100% |  |  |  | Diseñador | 1h | 1h | 109.19 | 109.19 |
| 52 | 2.2.1.3.5 | Diagrama de componentes |  | 1h | 2016-05-19 12:12 A | 2016-05-19 15:12 A | 51 | 100% |  |  |  | Diseñador | 1h | 1h | 109.19 | 109.19 |
| 53 | 2.2.1.3.6 | Diagrama de despliegue |  | 2h | 2016-05-19 15:12 A | 2016-05-19 17:12 A | 52 | 100% |  |  |  | Diseñador | 2h | 2h | 218.38 | 218.38 |
| 54 | 2.2.1.3.7 | Mapa de navegación |  | 1h | 2016-05-19 17:12 A | 2016-05-19 18:12 A | 53 | 100% |  |  |  | Diseñador | 1h | 1h | 109.19 | 109.19 |
| 55 | 2.2.1.3.8 | Maquetación (bocetos) |  | 6h | 2016-05-19 18:12 A | 2016-05-20 16:12 A | 54 | 100% |  |  |  | Diseñador | 6h | 6h | 655.14 | 655.14 |

Notes:
- 31: En esta actividad se define el tipo de ciclo de vida con el cual se estará trabajando durante el desarrollo del proyecto, este definirá las etapas y el orden de seguimiento de las mismas.
- 32: Lo que se llevará a cabo en esta actividad será el establecimiento de normas y políticas que regirán orden y disciplina durante el desarrollo del proyecto.
- 33: Se actualizará el pla del proyecto.
- 34: Se actualizará la matriz de comunicación.
- 49: Se diseñan los diagramas de casos de uso donde se realiza la relación entre el sistema y el cliente.
- 50: Es la línea de comunicación entre el usuario y el sistema de flujo alternativo se hace atreves de mensajes.
- 51: Se diseñan los diagramas de clases, en las cuales se determinaran sus atributos y métodos.
- 52: Todo lo que contiene la aplicación, se define la interacción entre los paquetes.
- 53: Se utiliza para modelar el hardware utilizado en las implementaciones de sistemas y las relaciones entre sus componentes
- 54: Se realiza el diseño del mapa de navegación de nuestro sitio, es decir es la estructura que tendrá, de tal manera que a nuestros clientes les sea fácil navegar en nuestro sitio web.
- 55: Son los bocetos que serán diseñados para la aplicación el back-end y el frond-end

| ID | WBS | Task | Type | Duration | Start | Finish | Predecessors | Complete | Remaining | Total slack | Free slack | Resources | Work | Actual work | Cost | Actual cost |
| --- | --- | --- | --- | --- | --- | --- | --- | --- | --- | --- | --- | --- | --- | --- | --- | --- |
| 56 | 2.2.1.3.9 | **Diseñar los diagramas de la BD** |  | 2.88d | 2016-05-18 09:12 A | 2016-05-20 18:12 A |  | 100% |  |  |  |  | 2h | 2h | 218.38 | 218.38 |
| 57 | 2.2.1.3.9.1 | Diagrama E-R |  | 1h | 2016-05-20 16:12 A | 2016-05-20 17:12 A | 55 | 100% |  |  |  | Diseñador | 1h | 1h | 109.19 | 109.19 |
| 58 | 2.2.1.3.9.2 | Diagrama Relacional |  | 1h | 2016-05-20 17:12 A | 2016-05-20 18:12 A | 57 | 100% |  |  |  | Diseñador | 1h | 1h | 109.19 | 109.19 |
| 59 | 2.2.1.3.9.3 | Definición de la arquitectura, diagramas UML, mapa de navegación y bocetos, Entrega de diagramas de la base de datos | milestone | 0d | 2016-05-18 09:12 A | 2016-05-18 09:12 A |  | 100% |  |  |  |  |  |  |  |  |
| 60 | 2.2.1.4 | **Codificación** |  | 15.81d | 2016-05-20 18:12 A | 2016-06-13 16:42 | 47 | 95% | 0.79d | 17.2d | 0d |  | 126.5h | 120.17h | 11,639.26 | 11,057.3 |
| 61 | 2.2.1.4.1 | Codificación de la base de datos |  | 3h | 2016-05-20 18:12 A | 2016-05-23 11:12 A | 57, 58 | 100% |  |  |  | Programador | 3h | 3h | 276.03 | 276.03 |
| 62 | 2.2.1.4.2 | **Módulo Usuario** |  | 1.56d | 2016-05-23 11:12 A | 2016-05-24 17:42 A |  | 100% |  |  |  |  | 12.5h | 12.5h | 1,150.12 | 1,150.12 |
| 63 | 2.2.1.4.2.1 | Interfaz |  | 1h | 2016-05-23 11:12 A | 2016-05-23 12:12 A | 61 | 100% |  |  |  | Programador | 1h | 1h | 92.01 | 92.01 |
| 64 | 2.2.1.4.2.2 | Clases de usuario |  | 6h | 2016-05-23 12:12 A | 2016-05-24 10:12 A | 63 | 100% |  |  |  | Programador | 6h | 6h | 552.06 | 552.06 |
| 65 | 2.2.1.4.2.3 | Conexión de la base de datos |  | 0.5h | 2016-05-24 10:12 A | 2016-05-24 10:42 A | 64 | 100% |  |  |  | Programador | 0.5h | 0.5h | 46.01 | 46.01 |
| 66 | 2.2.1.4.2.4 | Alta de usuarios |  | 0.5h | 2016-05-24 10:42 A | 2016-05-24 11:12 A | 65 | 100% |  |  |  | Programador | 0.5h | 0.5h | 46.01 | 46.01 |
| 67 | 2.2.1.4.2.5 | Baja de usuarios |  | 0.5h | 2016-05-24 11:12 A | 2016-05-24 11:42 A | 66 | 100% |  |  |  | Programador | 0.5h | 0.5h | 46.01 | 46.01 |
| 68 | 2.2.1.4.2.6 | Actualizacion de usuarios |  | 1h | 2016-05-24 11:42 A | 2016-05-24 12:42 A | 67 | 100% |  |  |  | Programador | 1h | 1h | 92.01 | 92.01 |
| 69 | 2.2.1.4.2.7 | Consultas de usuarios |  | 1h | 2016-05-24 12:42 A | 2016-05-24 15:42 A | 68 | 100% |  |  |  | Programador | 1h | 1h | 92.01 | 92.01 |
| 70 | 2.2.1.4.2.8 | Reportes de usuarios |  | 2h | 2016-05-24 15:42 A | 2016-05-24 17:42 A | 69 | 100% |  |  |  | Programador | 2h | 2h | 184.02 | 184.02 |
| 71 | 2.2.1.4.3 | **Módulo viajes** |  | 2.31d | 2016-05-24 17:42 A | 2016-05-27 10:12 A | 62 | 100% |  |  |  |  | 18.5h | 18.5h | 1,702.18 | 1,702.18 |
| 72 | 2.2.1.4.3.1 | Interfaz |  | 1h | 2016-05-24 17:42 A | 2016-05-24 18:42 A | 70 | 100% |  |  |  | Programador | 1h | 1h | 92.01 | 92.01 |
| 73 | 2.2.1.4.3.2 | Clases de viajes |  | 6h | 2016-05-24 18:42 A | 2016-05-25 16:42 A | 72 | 100% |  |  |  | Programador | 6h | 6h | 552.06 | 552.06 |
| 74 | 2.2.1.4.3.3 | Alta de viajes |  | 0.5h | 2016-05-25 16:42 A | 2016-05-25 17:12 A | 73 | 100% |  |  |  | Programador | 0.5h | 0.5h | 46.01 | 46.01 |
| 75 | 2.2.1.4.3.4 | Baja de viajes |  | 0.5d | 2016-05-25 17:12 A | 2016-05-26 11:12 A | 74 | 100% |  |  |  | Programador | 4h | 4h | 368.04 | 368.04 |
| 76 | 2.2.1.4.3.5 | Actualización de viajes |  | 0.5d | 2016-05-26 11:12 A | 2016-05-26 17:12 A | 75 | 100% |  |  |  | Programador | 4h | 4h | 368.04 | 368.04 |
| 77 | 2.2.1.4.3.6 | Consultas de viajes |  | 1h | 2016-05-26 17:12 A | 2016-05-26 18:12 A | 76 | 100% |  |  |  | Programador | 1h | 1h | 92.01 | 92.01 |
| 78 | 2.2.1.4.3.7 | Reportes de viajes |  | 2h | 2016-05-26 18:12 A | 2016-05-27 10:12 A | 77 | 100% |  |  |  | Programador | 2h | 2h | 184.02 | 184.02 |
| 79 | 2.2.1.4.4 | **Módulo clientes** |  | 2.31d | 2016-05-27 10:12 A | 2016-05-31 12:42 A | 71 | 100% |  |  |  |  | 18.5h | 18.5h | 1,702.18 | 1,702.18 |
| 80 | 2.2.1.4.4.1 | Interfaz |  | 1h | 2016-05-27 10:12 A | 2016-05-27 11:12 A | 78 | 100% |  |  |  | Programador | 1h | 1h | 92.01 | 92.01 |
| 81 | 2.2.1.4.4.2 | Clases clientes |  | 6h | 2016-05-27 11:12 A | 2016-05-30 09:12 A | 80 | 100% |  |  |  | Programador | 6h | 6h | 552.06 | 552.06 |
| 82 | 2.2.1.4.4.3 | Alta clientes |  | 0.5h | 2016-05-30 09:12 A | 2016-05-30 09:42 A | 81 | 100% |  |  |  | Programador | 0.5h | 0.5h | 46.01 | 46.01 |
| 83 | 2.2.1.4.4.4 | Baja clientes |  | 0.5d | 2016-05-30 09:42 A | 2016-05-30 15:42 A | 82 | 100% |  |  |  | Programador | 4h | 4h | 368.04 | 368.04 |
| 84 | 2.2.1.4.4.5 | Actualización clientes |  | 0.5d | 2016-05-30 15:42 A | 2016-05-31 09:42 A | 83 | 100% |  |  |  | Programador | 4h | 4h | 368.04 | 368.04 |
| 85 | 2.2.1.4.4.6 | Consultas clientes |  | 1h | 2016-05-31 09:42 A | 2016-05-31 10:42 A | 84 | 100% |  |  |  | Programador | 1h | 1h | 92.01 | 92.01 |
| 86 | 2.2.1.4.4.7 | Reportes de los clientes |  | 2h | 2016-05-31 10:42 A | 2016-05-31 12:42 A | 85 | 100% |  |  |  | Programador | 2h | 2h | 184.02 | 184.02 |

Notes:
- 57: El diagrama entidad relación se elabora para el diseño de la base de datos para identificar las entidades y atributos de una base de datos.
- 58: El diagrama relacional es un esquema para ver la relación entre tablas como las llaves foráneas, cardinalidad.
- 61: Se diseña la base de datos de acuerdo a los diagramas establecidos
- 63: Se diseño la interfaz del módulo usuario
- 64: Se codifica la clase usuario
- 65: Se hace la conexión a la base de datos
- 66: Se realizan las altas de los usuarios
- 67: Se realiza la baja de los usuarios
- 68: Se realiza la actualización de los uasuarios
- 69: Se realiza las consultas necesarias de este módulo
- 70: Al finalizar este módulo se hará un reporte de este módulo
- 72: Se diseño la interfaz del módulo usuario
- 73: Se codifica la clase viajes
- 74: Se realizan las altas de los viajes
- 75: Se realiza la baja de los viajes
- 76: Se realiza la actualización de los viajes
- 77: Se realiza las consultas necesarias de este módulo
- 78: Al finalizar este módulo se hará un reporte de este módulo
- 80: Se diseño la interfaz del módulo clientes
- 81: Se codifica la clase clientes
- 82: Se realizan las altas de los viajes
- 83: Se realiza la baja de los clientes
- 84: Se realiza la actualización de los clientes
- 85: Se realiza las consultas necesarias de este módulo
- 86: Al finalizar este módulo se hará un reporte de este módulo

| ID | WBS | Task | Duration | Start | Finish | Predecessors | Complete | Resources | Work | Actual work | Cost | Actual cost |
| --- | --- | --- | --- | --- | --- | --- | --- | --- | --- | --- | --- | --- |
| 87 | 2.2.1.4.5 | **Módulo hotel** | 2.31d | 2016-05-31 12:42 A | 2016-06-02 17:12 A | 79 | 100% |  | 18.5h | 18.5h | 1,702.18 | 1,702.18 |
| 88 | 2.2.1.4.5.1 | Interfaz | 1h | 2016-05-31 12:42 A | 2016-05-31 15:42 A | 86 | 100% | Programador | 1h | 1h | 92.01 | 92.01 |
| 89 | 2.2.1.4.5.2 | Clases hotel | 6h | 2016-05-31 15:42 A | 2016-06-01 11:42 A | 88 | 100% | Programador | 6h | 6h | 552.06 | 552.06 |
| 90 | 2.2.1.4.5.3 | Alta de hotel | 0.5h | 2016-06-01 11:42 A | 2016-06-01 12:12 A | 89 | 100% | Programador | 0.5h | 0.5h | 46.01 | 46.01 |
| 91 | 2.2.1.4.5.4 | Baja de viajes | 0.5d | 2016-06-01 12:12 A | 2016-06-01 18:12 A | 90 | 100% | Programador | 4h | 4h | 368.04 | 368.04 |
| 92 | 2.2.1.4.5.5 | Actualización hotel | 0.5d | 2016-06-01 18:12 A | 2016-06-02 12:12 A | 91 | 100% | Programador | 4h | 4h | 368.04 | 368.04 |
| 93 | 2.2.1.4.5.6 | Consultas hotel | 1h | 2016-06-02 12:12 A | 2016-06-02 15:12 A | 92 | 100% | Programador | 1h | 1h | 92.01 | 92.01 |
| 94 | 2.2.1.4.5.7 | Reportes hotel | 2h | 2016-06-02 15:12 A | 2016-06-02 17:12 A | 93 | 100% | Programador | 2h | 2h | 184.02 | 184.02 |
| 95 | 2.2.1.4.6 | **Módulo transporte** | 2.31d | 2016-06-02 17:12 A | 2016-06-07 09:42 A | 87 | 100% |  | 18.5h | 18.5h | 1,702.18 | 1,702.18 |
| 96 | 2.2.1.4.6.1 | Interfaz | 1h | 2016-06-02 17:12 A | 2016-06-02 18:12 A | 94 | 100% | Programador | 1h | 1h | 92.01 | 92.01 |
| 97 | 2.2.1.4.6.2 | Clase transporte | 6h | 2016-06-02 18:12 A | 2016-06-03 16:12 A | 96 | 100% | Programador | 6h | 6h | 552.06 | 552.06 |
| 98 | 2.2.1.4.6.3 | Alta transporte | 0.5h | 2016-06-03 16:12 A | 2016-06-03 16:42 A | 97 | 100% | Programador | 0.5h | 0.5h | 46.01 | 46.01 |
| 99 | 2.2.1.4.6.4 | Baja transporte | 0.5d | 2016-06-03 16:42 A | 2016-06-06 10:42 A | 98 | 100% | Programador | 4h | 4h | 368.04 | 368.04 |
| 100 | 2.2.1.4.6.5 | Actualización transporte | 0.5d | 2016-06-06 10:42 A | 2016-06-06 16:42 A | 99 | 100% | Programador | 4h | 4h | 368.04 | 368.04 |
| 101 | 2.2.1.4.6.6 | Consultas transporte | 1h | 2016-06-06 16:42 A | 2016-06-06 17:42 A | 100 | 100% | Programador | 1h | 1h | 92.01 | 92.01 |
| 102 | 2.2.1.4.6.7 | Reportes transporte | 2h | 2016-06-06 17:42 A | 2016-06-07 09:42 A | 101 | 100% | Programador | 2h | 2h | 184.02 | 184.02 |
| 103 | 2.2.1.4.7 | **Módulo procedencia-destino** | 2.31d | 2016-06-07 09:42 A | 2016-06-09 12:12 A | 95 | 100% |  | 18.5h | 18.5h | 1,702.18 | 1,702.18 |
| 104 | 2.2.1.4.7.1 | Interfaz | 1h | 2016-06-07 09:42 A | 2016-06-07 10:42 A | 102 | 100% | Programador | 1h | 1h | 92.01 | 92.01 |
| 105 | 2.2.1.4.7.2 | Clases procedencia-destino | 6h | 2016-06-07 10:42 A | 2016-06-07 18:42 A | 104 | 100% | Programador | 6h | 6h | 552.06 | 552.06 |
| 106 | 2.2.1.4.7.3 | Alta procedencia-destino | 0.5h | 2016-06-07 18:42 A | 2016-06-08 09:12 A | 105 | 100% | Programador | 0.5h | 0.5h | 46.01 | 46.01 |
| 107 | 2.2.1.4.7.4 | Baja procedencia-destino | 0.5d | 2016-06-08 09:12 A | 2016-06-08 15:12 A | 106 | 100% | Programador | 4h | 4h | 368.04 | 368.04 |
| 108 | 2.2.1.4.7.5 | Actualización procedencia-destino | 0.5d | 2016-06-08 15:12 A | 2016-06-09 09:12 A | 107 | 100% | Programador | 4h | 4h | 368.04 | 368.04 |
| 109 | 2.2.1.4.7.6 | Consultas procedencia-destino | 1h | 2016-06-09 09:12 A | 2016-06-09 10:12 A | 108 | 100% | Programador | 1h | 1h | 92.01 | 92.01 |
| 110 | 2.2.1.4.7.7 | Reportes procedencia-destino | 2h | 2016-06-09 10:12 A | 2016-06-09 12:12 A | 109 | 100% | Programador | 2h | 2h | 184.02 | 184.02 |

Notes:
- 88: Se diseño la interfaz del módulo hotel
- 89: Se codifica la clase hotel
- 90: Se realizan las altas del hotel
- 91: Se realiza la baja del hotel
- 92: Se realiza la actualización del hotel
- 93: Se realiza las consultas necesarias de este módulo
- 94: Al finalizar este módulo se hará un reporte de este módulo
- 96: Se diseño la interfaz del módulo transporte
- 97: Se codifica la clase transporte
- 98: Se realizan las altas del transporte
- 99: Se realiza la baja del transporte
- 100: Se realiza la actualización del transporte
- 101: Se realiza las consultas necesarias de este módulo
- 102: Al finalizar este módulo se hará un reporte de este módulo
- 104: Se diseño la interfaz del módulo procedencia-destino
- 105: Se codifica la clase procedencia-destino
- 106: Se realizan las altas de procedencia-destino
- 107: Se realiza la baja de procedencia-destino
- 108: Se realiza la actualización de procedencia-destino
- 109: Se realiza las consultas necesarias de este módulo
- 110: Al finalizar este módulo se hará un reporte de este módulo

| ID | WBS | Task | Duration | Start | Finish | Predecessors | Complete | Remaining | Total slack | Free slack | Resources | Work | Actual work | Cost | Actual cost |
| --- | --- | --- | --- | --- | --- | --- | --- | --- | --- | --- | --- | --- | --- | --- | --- |
| 111 | 2.2.1.4.8 | **Módulo Registro paquetes** | 2.31d | 2016-06-09 12:12 A | 2016-06-13 16:42 | 103 | 66% | 0.79d | 17.2d | 0d |  | 18.5h | 12.18h | 1,702.18 | 1,120.22 |
| 112 | 2.2.1.4.8.1 | Interfaz | 1h | 2016-06-09 12:12 A | 2016-06-09 15:12 A | 110 | 100% |  |  |  | Programador | 1h | 1h | 92.01 | 92.01 |
| 113 | 2.2.1.4.8.2 | Clases Registro paquetes | 6h | 2016-06-09 15:12 A | 2016-06-10 11:12 A | 112 | 100% |  |  |  | Programador | 6h | 6h | 552.06 | 552.06 |
| 114 | 2.2.1.4.8.3 | Alta Registro paquetes | 0.5h | 2016-06-10 11:12 A | 2016-06-10 11:42 A | 113 | 100% |  |  |  | Programador | 0.5h | 0.5h | 46.01 | 46.01 |
| 115 | 2.2.1.4.8.4 | Baja Registro paquetes | 0.5d | 2016-06-10 11:42 A | 2016-06-10 17:42 A | 114 | 100% |  |  |  | Programador | 4h | 4h | 368.04 | 368.04 |
| 116 | 2.2.1.4.8.5 | Actualización Registro paquetes | 0.5d | 2016-06-10 17:42 A | 2016-06-13 11:42 | 115 | 17% | 0.42d | 17.2d | 0d | Programador | 4h | 0.68h | 368.04 | 62.11 |
| 117 | 2.2.1.4.8.6 | Consultas Registro paquetes | 1h | 2016-06-13 11:42 | 2016-06-13 12:42 | 116 |  |  | 17.2d | 0d | Programador | 1h |  | 92.01 |  |
| 118 | 2.2.1.4.8.7 | Reportes Registro paquetes | 2h | 2016-06-13 12:42 | 2016-06-13 16:42 | 117 |  |  | 17.2d |  | Programador | 2h |  | 184.02 |  |
| 119 | 2.2.1.5 | **Pruebas** | 14d | 2016-06-13 16:42 A | 2016-07-01 16:42 | 60, 111 | 95% | 0.7d | 3.9d | 0d |  | 112h | 106.4h | 11,821.6 | 11,230.52 |
| 120 | 2.2.1.5.1 | **Pruebas de caja blanca** | 14d | 2016-06-13 16:42 A | 2016-07-01 16:42 |  | 95% | 0.7d | 3.9d |  |  | 112h | 106.4h | 11,821.6 | 11,230.52 |
| 121 | 2.2.1.5.1.1 | **Módulo Usuario** | 2d | 2016-06-13 16:42 A | 2016-06-15 16:42 A |  | 100% |  |  |  |  | 16h | 16h | 1,688.8 | 1,688.8 |
| 122 | 2.2.1.5.1.1.1 | Pruebas unitarias | 1d | 2016-06-13 16:42 A | 2016-06-14 16:42 A | 118 | 100% |  |  |  | Tester | 8h | 8h | 844.4 | 844.4 |
| 123 | 2.2.1.5.1.1.2 | Pruebas de módulo | 1d | 2016-06-14 16:42 A | 2016-06-15 16:42 A | 122 | 100% |  |  |  | Tester | 8h | 8h | 844.4 | 844.4 |
| 124 | 2.2.1.5.1.2 | **Módulo viajes** | 2d | 2016-06-15 16:42 A | 2016-06-17 16:42 A | 121 | 100% |  |  |  |  | 16h | 16h | 1,688.8 | 1,688.8 |
| 125 | 2.2.1.5.1.2.1 | Pruebas unitarias | 1d | 2016-06-15 16:42 A | 2016-06-16 16:42 A | 123 | 100% |  |  |  | Tester | 8h | 8h | 844.4 | 844.4 |
| 126 | 2.2.1.5.1.2.2 | Pruebas de módulo | 1d | 2016-06-16 16:42 A | 2016-06-17 16:42 A | 125 | 100% |  |  |  | Tester | 8h | 8h | 844.4 | 844.4 |
| 127 | 2.2.1.5.1.3 | **Módulo clientes** | 2d | 2016-06-17 16:42 A | 2016-06-21 16:42 A | 124 | 100% |  |  |  |  | 16h | 16h | 1,688.8 | 1,688.8 |
| 128 | 2.2.1.5.1.3.1 | Pruebas unitarias | 1d | 2016-06-17 16:42 A | 2016-06-20 16:42 A | 126 | 100% |  |  |  | Tester | 8h | 8h | 844.4 | 844.4 |
| 129 | 2.2.1.5.1.3.2 | Pruebas de módulo | 1d | 2016-06-20 16:42 A | 2016-06-21 16:42 A | 128 | 100% |  |  |  | Tester | 8h | 8h | 844.4 | 844.4 |
| 130 | 2.2.1.5.1.4 | **Módulo hotel** | 2d | 2016-06-21 16:42 A | 2016-06-23 16:42 A | 127 | 100% |  |  |  |  | 16h | 16h | 1,688.8 | 1,688.8 |
| 131 | 2.2.1.5.1.4.1 | Pruebas unitarias | 1d | 2016-06-21 16:42 A | 2016-06-22 16:42 A | 129 | 100% |  |  |  | Tester | 8h | 8h | 844.4 | 844.4 |
| 132 | 2.2.1.5.1.4.2 | Pruebas de módulo | 1d | 2016-06-22 16:42 A | 2016-06-23 16:42 A | 131 | 100% |  |  |  | Tester | 8h | 8h | 844.4 | 844.4 |
| 133 | 2.2.1.5.1.5 | **Módulo transporte** | 2d | 2016-06-23 16:42 A | 2016-06-27 16:42 A | 130 | 100% |  |  |  |  | 16h | 16h | 1,688.8 | 1,688.8 |
| 134 | 2.2.1.5.1.5.1 | Pruebas unitarias | 1d | 2016-06-23 16:42 A | 2016-06-24 16:42 A | 132 | 100% |  |  |  | Tester | 8h | 8h | 844.4 | 844.4 |
| 135 | 2.2.1.5.1.5.2 | Pruebas de módulo | 1d | 2016-06-24 16:42 A | 2016-06-27 16:42 A | 134 | 100% |  |  |  | Tester | 8h | 8h | 844.4 | 844.4 |

Notes:
- 112: Se diseño la interfaz del módulo Registro paquetes
- 113: Se codifica la clase Registro paquetes
- 114: Se realizan las altas de Registro paquetes
- 115: Se realiza la baja de Registro paquetes
- 116: Se realiza la actualización de Registro paquetes
- 117: Se realiza las consultas necesarias de este módulo
- 118: Al finalizar este módulo se hará un reporte de este módulo
- 122: Es una forma de probar el correcto funcionamiento de un módulo de código.
- 123: Se realizan pruebas de funcionalidad para este módulo.
- 125: Es una forma de probar el correcto funcionamiento de un módulo de código.
- 126: Se realizan pruebas de funcionalidad para este módulo.
- 128: Es una forma de probar el correcto funcionamiento de un módulo de código.
- 129: Se realizan pruebas de funcionalidad para este módulo.
- 131: Es una forma de probar el correcto funcionamiento de un módulo de código.
- 132: Se realizan pruebas de funcionalidad para este módulo.
- 134: Es una forma de probar el correcto funcionamiento de un módulo de código.
- 135: Se realizan pruebas de funcionalidad para este módulo.

| ID | WBS | Task | Type | Duration | Start | Finish | Predecessors | Complete | Remaining | Total slack | Constraint | Resources | Work | Actual work | Cost | Actual cost |
| --- | --- | --- | --- | --- | --- | --- | --- | --- | --- | --- | --- | --- | --- | --- | --- | --- |
| 136 | 2.2.1.5.1.6 | **Módulo procedencia-destino** |  | 2d | 2016-06-27 16:42 A | 2016-06-29 16:42 A | 133 | 100% |  |  |  |  | 16h | 16h | 1,688.8 | 1,688.8 |
| 137 | 2.2.1.5.1.6.1 | Pruebas unitarias |  | 1d | 2016-06-27 16:42 A | 2016-06-28 16:42 A | 135 | 100% |  |  |  | Tester | 8h | 8h | 844.4 | 844.4 |
| 138 | 2.2.1.5.1.6.2 | Pruebas de módulo |  | 1d | 2016-06-28 16:42 A | 2016-06-29 16:42 A | 137 | 100% |  |  |  | Tester | 8h | 8h | 844.4 | 844.4 |
| 139 | 2.2.1.5.1.7 | **Módulo Registro paquetes** |  | 2d | 2016-06-29 16:42 A | 2016-07-01 16:42 | 136 | 65% | 0.7d | 3.9d |  |  | 16h | 10.4h | 1,688.8 | 1,097.72 |
| 140 | 2.2.1.5.1.7.1 | Pruebas unitarias |  | 1d | 2016-06-29 16:42 A | 2016-06-30 16:42 A | 138 | 100% |  |  |  | Tester | 8h | 8h | 844.4 | 844.4 |
| 141 | 2.2.1.5.1.7.2 | Pruebas de módulo |  | 1d | 2016-06-30 16:42 A | 2016-07-01 16:42 | 140 | 30% | 0.7d | 3.9d |  | Tester | 8h | 2.4h | 844.4 | 253.32 |
| 142 | 2.2.1.5.1.7.3 | Entrega de documentos de Pruebas | milestone | 0d | 2016-06-29 16:42 A | 2016-06-29 16:42 A |  | 100% |  |  |  |  |  |  |  |  |
| 143 | 2.2.1.6 | **Implementación** |  | 5d | 2016-07-01 16:42 A | 2016-07-11 16:42 | 119 | 78% | 1.1d | 0d |  |  | 56h | 38.4h | 5,483.76 | 3,682.22 |
| 144 | 2.2.1.6.1 | Evaluación de hosting |  | 1d | 2016-07-01 16:42 A | 2016-07-05 16:42 A | 141 | 100% |  |  |  | Programador | 8h | 8h | 736.08 | 736.08 |
| 145 | 2.2.1.6.2 | Implementar el sitio en hosting |  | 1d | 2016-07-05 16:42 A | 2016-07-06 16:42 A | 144 | 100% |  |  |  | Programador | 8h | 8h | 736.08 | 736.08 |
| 146 | 2.2.1.6.3 | Manual de usuario |  | 1d | 2016-07-06 16:42 A | 2016-07-07 16:42 A | 145 | 100% |  |  |  | Programador | 8h | 8h | 736.08 | 736.08 |
| 147 | 2.2.1.6.4 | Entrega de manual de usuario | milestone | 0d | 2016-07-01 16:42 A | 2016-07-01 16:42 A |  | 100% |  |  |  |  |  |  |  |  |
| 148 | 2.2.1.6.5 | **Pruebas de caja blanca** |  | 2d | 2016-07-07 16:42 A | 2016-07-11 16:42 |  | 45% | 1.1d | 0d |  |  | 32h | 14.4h | 3,275.52 | 1,473.98 |
| 149 | 2.2.1.6.5.1 | Pruebas de rendimiento |  | 1d | 2016-07-07 16:42 A | 2016-07-08 16:42 | 146 | 90% | 0.1d | 0d |  | Asegurador de la Calidad; Tester | 16h | 14.4h | 1,637.76 | 1,473.98 |
| 150 | 2.2.1.6.5.2 | Pruebas de sistema |  | 1d | 2016-07-08 16:42 | 2016-07-11 16:42 | 149 |  |  | 0d |  | Asegurador de la Calidad; Tester | 16h |  | 1,637.76 |  |
| 151 | 2.2.1.7 | **Cierre de proyecto** |  | 12d | 2016-07-11 16:42 | 2016-08-10 16:42 | 143 |  |  | 0d |  |  | 160h |  | 19,872.32 |  |
| 152 | 2.2.1.7.1 | Carta de cierre de proyecto |  | 1d | 2016-07-11 16:42 | 2016-07-12 16:42 | 150 |  |  | 0d |  | Administrador de Proyectos | 8h |  | 1,165.52 |  |
| 153 | 2.2.1.7.2 | Acta de cierre de proyecto |  | 1d | 2016-07-12 16:42 | 2016-07-13 16:42 | 152 |  |  | 0d |  | Administrador de Proyectos | 8h |  | 1,165.52 |  |
| 154 | 2.2.1.7.3 | Evaluacion de desempeño |  | 2d | 2016-07-13 16:42 | 2016-07-15 16:42 | 153 |  |  | 0d |  | Administrador de la Configuración; Administrador de Proyectos; Asegurador de la Calidad | 48h |  | 5,274.08 |  |
| 155 | 2.2.1.7.4 | Juntas de lecciones aprendidas |  | 2d | 2016-07-15 16:42 | 2016-08-02 16:42 | 154 |  |  | 0d |  | Administrador de Proyectos | 16h |  | 2,331.04 |  |
| 156 | 2.2.1.7.5 | Revisión de adherencia de procesos |  | 2d | 2016-08-02 16:42 | 2016-08-04 16:42 | 155 |  |  | 0d |  | Administrador de la Configuración; Administrador de Proyectos; Asegurador de la Calidad | 48h |  | 5,274.08 |  |
| 157 | 2.2.1.7.6 | Liberaciones de recursos |  | 2d | 2016-08-04 16:42 | 2016-08-08 16:42 | 156 |  |  | 0d |  | Administrador de Proyectos | 16h |  | 2,331.04 |  |
| 158 | 2.2.1.7.7 | Informe final (cierre) |  | 2d | 2016-08-08 16:42 | 2016-08-10 16:42 | 157 |  |  | 0d |  | Administrador de Proyectos | 16h |  | 2,331.04 |  |
| 159 | 2.2.1.7.8 | Carta de cierre de proyecto, Acta de cierre de proyecto, Lecciones aprendidas, Revision de adherencia de procesos y Informe final | milestone | 0d | 2016-07-12 19:00 | 2016-07-12 19:00 |  |  |  | 10.71d | finish no earlier than 2016-07-12 19:00 |  |  |  |  |  |

Notes:
- 137: Es una forma de probar el correcto funcionamiento de un módulo de código.
- 138: Se realizan pruebas de funcionalidad para este módulo.
- 140: Es una forma de probar el correcto funcionamiento de un módulo de código.
- 141: Se realizan pruebas de funcionalidad para este módulo.
- 146: Se realiza para que el encargado de los registros de la base de datos tenga conocimiento del funcionamiento de la base de datos.
- 149: Se somete el sistema o el proyecto finalizado a varias pruebas de rendimiento.
- 150: Se somete el sistema o el proyecto finalizado a varias pruebas de sistema.
- 152: Es donde se establece que el proyecto ha culminado.
- 153: Es donde se establece que el proyecto ha culminado.
- 154: Se evalua el desempeño de los participantes del proyecto
- 155: El propósito de esta plantilla es ayudar al equipo del proyecto compartir conocimientos obtenidos de la experiencia de modo que toda la organización se puede beneficiar.
- 156: Son las revisiones de todos los procesos aplicados en el software.
- 157: Se liberan a todos los recursos humanos.
- 158: Se establececomo concluyo el proyecto.
